# VISTA SP1 SKU DIFF Common Library Migration to WEX Common Task Library

Schedule from MS Project, 2008-04-02 to 2008-05-15.
Aditi
Intended as one single incremental release that will be broken down into phases of analysis/designing with Aida, code development as required, test implementation, and submission for code review, buddy building, and final approval.

## Calendars

- Standard: Mon-Fri 08:00-12:00, 13:00-17:00; Sat-Sun off.

## Resources

| Resource | Group |
| --- | --- |
| Matthew Klump (Aditi) | WEX |
| Kiran Gurram (Aditi) | WEX |
| Jason Jobe | WEX |
| Aida Reyes Aguirre | WEX |

## Schedule

| ID | WBS | Task | Duration | Start | Finish | Predecessors | Total slack | Constraint | Resources | Work |
| --- | --- | --- | --- | --- | --- | --- | --- | --- | --- | --- |
| 1 | 1 | Cost Analysis and Update Gantt Chart subproject proposal | 1.5d | 2008-04-02 | 2008-04-03 |  | 0d | start no earlier than 2008-04-02 | Matthew Klump (Aditi) | 12h |
| 2 | 2 | **Service Pack 1 common library vs. Task Library Differentiation** | 7d | 2008-04-03 | 2008-04-14 | 1 | 0d |  |  | 76.69h |
| 3 | 2.1 | Design Architecture - With Aida Reyes Aguirre, analyze what task library methods are implemented, which are not. | 4d | 2008-04-03 | 2008-04-09 |  | 3d |  | Aida Reyes Aguirre | 32h |
| 4 | 2.2 | Design Architecture - Remaining portion of SP1 common library must be converted to XML | 4d | 2008-04-03 | 2008-04-09 | 1 | 0d |  | Matthew Klump (Aditi) | 32h |
| 5 | 2.3 | Implement code - With Aida Reyes Aguirre, Implement required changes for Task Library | 3d | 2008-04-09 | 2008-04-14 | 4 | 0d |  | Matthew Klump (Aditi) [10%]; Aida Reyes Aguirre [90%] | 12.69h |
| 6 | 3 | **Implement one SP1 automation case with WEX task library** | 7.25d | 2008-04-14 | 2008-04-23 | 2 | 0d |  |  | 35.24h |
| 7 | 3.1 | Identify a location on \\wexfs to set temporary support file location that shall be known as [WTT\TestBinRoot] | 0.25d | 2008-04-14 | 2008-04-14 |  | 0d |  | Matthew Klump (Aditi) | 2h |
| 8 | 3.2 | Design Architecture - Design one SP1 automation test case in terms of C# and TAEF | 3d | 2008-04-14 | 2008-04-17 | 7 | 0d |  | Kiran Gurram (Aditi) [15%]; Matthew Klump (Aditi) [75%]; Aida Reyes Aguirre [10%] | 15.09h |
| 9 | 3.3 | Implement Code - Write code for the designed SP1 automation test case | 3d | 2008-04-17 | 2008-04-22 | 8 | 0d |  | Kiran Gurram (Aditi) [15%]; Matthew Klump (Aditi) [75%]; Aida Reyes Aguirre [10%] | 10.15h |
| 10 | 3.4 | Create TJM job identical to responsible WTT job in TKBGITWTTCT61 | 1d | 2008-04-22 | 2008-04-23 | 9 | 12d |  | Matthew Klump (Aditi) [50%]; Kiran Gurram (Aditi) [50%] | 8h |
| 11 | 4 | **Smoke Test SP1 automation test case with implemented WEX Task Library calls** | 7d? | 2008-04-22 | 2008-05-01 | 9 | 0d |  | Matthew Klump (Aditi) [33%]; Kiran Gurram (Aditi) [33%]; Aida Reyes Aguirre [33%] | 77.62h |
| 12 | 4.1 | Develop Windows 7 SKU flavor Test Matrix | 0.5d | 2008-04-22 | 2008-04-23 |  | 0d |  | Matthew Klump (Aditi) [33%]; Kiran Gurram (Aditi) [33%]; Jason Jobe [33%] | 3.96h |
| 13 | 4.2 | Finish ASI 3.0 SafeOS deployment as required in 24 machine automation pool | 3d? | 2008-04-23 | 2008-04-28 | 12 | 0d |  | Matthew Klump (Aditi) | 24h |
| 14 | 4.3 | Deploy TestOS Windows 7 test matrix | 3d | 2008-04-28 | 2008-05-01 | 13 | 0d |  | Kiran Gurram (Aditi) [50%]; Matthew Klump (Aditi) [50%] | 24h |
| 15 | 4.4 | Schedule automation to run periodically | 0.5d | 2008-05-01 | 2008-05-01 | 14 | 0d |  | Kiran Gurram (Aditi) [50%]; Matthew Klump (Aditi) [50%] | 4h |
| 16 | 5 | **Submission of all final code changes** | 6d | 2008-05-01 | 2008-05-09 | 15 | 0d |  |  | 31.74h |
| 17 | 5.1 | Code review task library and first ported SP1 test case changes. | 2d | 2008-05-01 | 2008-05-05 |  | 0d |  | Matthew Klump (Aditi) [33%]; Aida Reyes Aguirre [33%]; Kiran Gurram (Aditi) [33%] | 10.05h |
| 18 | 5.2 | Buddy build changes using bbpack on each other's code | 3d | 2008-05-05 | 2008-05-08 | 17 | 0d |  | Matthew Klump (Aditi) [33%]; Kiran Gurram (Aditi) [33%]; Aida Reyes Aguirre [33%] | 15.87h |
| 19 | 5.3 | Submit reimplemented SP1 automation final verified changes and task library final changes to SNAP system. | 1d | 2008-05-08 | 2008-05-09 | 18 | 0d |  | Matthew Klump (Aditi) [33%]; Kiran Gurram (Aditi) [33%]; Aida Reyes Aguirre [33%] | 5.82h |
| 20 | 6 | **Officially submit SP1 test code to Windows Official build** | 3d | 2008-05-09 | 2008-05-14 | 6, 16 | 0d |  |  | 18.67h |
| 21 | 6.1 | Contact proper authorities/feature team to begin official build process inclusion | 1d | 2008-05-09 | 2008-05-12 |  | 0d |  | Jason Jobe | 8h |
| 22 | 6.2 | Complete correct official checkin process to Windows 7 main build | 2d | 2008-05-12 | 2008-05-14 | 21 | 0d |  | Matthew Klump (Aditi) [50%]; Kiran Gurram (Aditi) [50%] | 10.67h |
| 23 | 7 | Repeat Major task steps 3, 4, and 5 until 100% of all SP1 test cases are successfully ported and running in TAEF + TJM = Sparta | 1d | 2008-05-14 | 2008-05-15 | 20 | 0d |  | Matthew Klump (Aditi) [33%]; Kiran Gurram (Aditi) [33%]; Jason Jobe [33%] | 7.92h |

Notes:
- 3: This step is critical with the help of Aida Reyes Aguirre to pinpoint exactly what task library methods are needed for SP1 test case compatibility in C#. For example, many cases call for reliable network credentials.
- 4: The deliverable for this task will be an XML schema for the data portion of the SP1 common library as well as the actual XML document data. This deliverable will then be handed off to Aida Aguirre to be called on at some later point during implementation as a resource for RPF resource keys and querry IDs.
- 5: Matthew is listed as a 10% resource to provide help deciphering John Muller's custom string extraction methods that were used for his implemented test cases for gaming, etc. that pieced together the fully qualified names of xml document resourses living within the Vista OS.
- 7: Temporary [WTTTestBinRoot] test file support location
- 8: This design will be geared towards the full advantages of WEX task library, C#, and the .NET Framework. The delieverable should be a word document or UML diagrams that may or may not be object oriented since this is test automation we're designing.
- 9: Aida is listed as a resource to help plug in the implemented SP1 test case.
- 10: The created TJM job will reveal any unforseen obsticales not previously researched or discussed with John Giannoumis.
- 11: Everyone helps equally with smoke testing the implementation. Matthew and Kiran should be responsible for setting up the test lab machines. Aida's input will be needed to triage possible API call problems and/or diagnose any special requirements Task Library may or may not have. While execuion is underway, TJM should be periodically checked that TAEF logging is correctly happening while tests execute. / The deliverable for this task should be the complete deployment of our 24 Machine Test Pool and schedule the periodic execution of our automation.
- 15: The deliverable for this task must be the complete and varified 100% working task library extensions and also the first successfully ported SP1 SKU DIFF test case automation.
- 17: The deliverable for this task should be documented changes to any code that needs changing for not entry point checking in terms of the test execution object oriented model or does not meet certain other required house rules for logic flow, naming, etc.
- 18: The deliverable for this task show be some sort of achknowledgement that changes for task library and SP1 automation work AND build successfully in the other person's build environment and enlistment using bbpack utility.
- 19: The deliverable for this task should be an acknowledgement from SNAP that all pristine and final changes were accepted.
- 20: This action populates a required WTT attribute upon which all our test code is dependent known as [WTTTestBinRoot] for test files. This attibute can be set locally for individual machines for test case development purposes, but not for the entire 24 machine test automation pool without compiled test code included with Windows 7 official build. This must be done since [WTTTestBinRoot] is dependent on [WTTBuildLabString] attribute.
- 22: Once this step is complete and test code is migrated to all build branches, then and only then will [WTTTestBinRoot] be correctly set with access to all compiled tests.
- 23: The deliverable of this task should be all of the SP1 test automation inplemented and running in SPARTA ready to be handed off to their Feature Team owners.
